# Merger_and_Acquisition_Analysis

Schedule from MS Project, 2016-05-16 to 2016-12-07, costs in $.

## Calendars

- Standard: Mon-Fri 08:00-12:00, 13:00-17:00; Sat-Sun off.

## Resources

| Resource |
| --- |
| Project Manager |
| SME |
| Analyst |
| Vendor |
| Creative Designer |
| Sponsor |
| Sales Associate |
| Personal Relationship Manager |
| Marketing Manager |

## Schedule

| ID | WBS | Task | Type | Duration | Start | Finish | Predecessors | Total slack | Free slack | Resources | Work | Cost |
| --- | --- | --- | --- | --- | --- | --- | --- | --- | --- | --- | --- | --- |
| 1 | 1 | Begin Project | milestone | 0d | 2016-05-16 | 2016-05-16 |  | 0d |  |  |  |  |
| 2 | 2 | **Review Business Strategy Landscape** |  | 24d | 2016-05-16 | 2016-06-16 |  | 0d |  |  | 224h | 36,000 |
| 3 | 2.1 | Identify service/product gaps and opportunities |  | 5d | 2016-05-16 | 2016-05-20 | 1 | 0d |  | Project Manager | 40h | 3,000 |
| 4 | 2.2 | Complete SWOT analysis |  | 2d | 2016-05-23 | 2016-05-24 | 3 | 0d |  | Marketing Manager | 16h | 3,000 |
| 5 | 2.3 | Review business model |  | 1d | 2016-05-25 | 2016-05-25 | 4 | 0d |  | Marketing Manager | 8h | 600 |
| 6 | 2.4 | Review organizational marketing strategy |  | 3d | 2016-05-26 | 2016-05-30 | 5 | 0d |  | Marketing Manager | 24h | 1,800 |
| 7 | 2.5 | Review local marketing strategy |  | 1d | 2016-05-31 | 2016-05-31 | 6 | 0d |  | Marketing Manager | 8h | 600 |
| 8 | 2.6 | Review global marketing strategy |  | 2d | 2016-06-01 | 2016-06-02 | 7 | 0d |  | Marketing Manager | 16h | 600 |
| 9 | 2.7 | Review marketing plan for campaign budget |  | 1d | 2016-06-03 | 2016-06-03 | 8 | 0d |  | Marketing Manager | 8h | 600 |
| 10 | 2.8 | Establish go-to-markets for organization |  | 1d | 2016-06-06 | 2016-06-06 | 9 | 0d |  | Marketing Manager | 8h | 600 |
| 11 | 2.9 | Evaluate alignment to corporate strategy goals |  | 2d | 2016-06-07 | 2016-06-08 | 10 | 0d |  | Marketing Manager; Sponsor | 32h | 1,200 |
| 12 | 2.10 | Evaluate competitive advantages |  | 2d | 2016-06-09 | 2016-06-10 | 11 | 0d |  | Marketing Manager; Analyst | 32h | 3,600 |
| 13 | 2.11 | Review product and service margins |  | 3d | 2016-06-13 | 2016-06-15 | 12 | 0d |  | Marketing Manager | 24h | 1,800 |
| 14 | 2.12 | Review previous campaign performance |  | 1d | 2016-06-16 | 2016-06-16 | 13 | 0d |  | Marketing Manager | 8h | 600 |
| 15 | 2.13 | Business Strategy Landscape Review Complete | milestone | 0d | 2016-06-16 | 2016-06-16 | 14 | 0d |  | Project Manager |  |  |
| 16 | 3 | **Develop Campaign Concepts** |  | 26d | 2016-06-17 | 2016-07-22 |  | 0d |  |  | 230h | 76,080 |
| 17 | 3.1 | Create process for qualifying ideas |  | 2d | 2016-06-17 | 2016-06-20 | 15 | 0d |  | Marketing Manager | 16h | 3,000 |
| 18 | 3.2 | Establish process for idea sharing |  | 2d | 2016-06-21 | 2016-06-22 | 17 | 0d |  | Marketing Manager | 16h | 3,000 |
| 19 | 3.3 | Gather ideas |  | 1d | 2016-06-23 | 2016-06-23 | 18 | 0d |  | Analyst | 8h | 600 |
| 20 | 3.4 | Final shaping and development of ideas |  | 2d | 2016-06-24 | 2016-06-27 | 19 | 0d |  | Marketing Manager | 16h | 3,000 |
| 21 | 3.5 | Research market environment |  | 2d | 2016-06-28 | 2016-06-29 | 20 | 0d |  | Analyst | 16h | 3,000 |
| 22 | 3.6 | Develop preliminary campaign concepts |  | 2d | 2016-06-30 | 2016-07-01 | 21 | 0d |  | Marketing Manager | 16h | 3,000 |
| 23 | 3.7 | Identify campaign targets |  | 1d | 2016-07-04 | 2016-07-04 | 22 | 0d |  | Marketing Manager | 8h | 1,200 |
| 24 | 3.8 | Develop campaign success metrics |  | 2d | 2016-07-05 | 2016-07-06 | 23 | 0d |  | Marketing Manager | 16h | 1,200 |
| 25 | 3.9 | Develop campaign tracking and analysis process |  | 3d | 2016-07-07 | 2016-07-11 | 24 | 0d |  | Marketing Manager | 24h | 1,800 |
| 26 | 3.10 | Validate concepts through test groups and market research |  | 3d | 2016-07-12 | 2016-07-14 | 25 | 0d |  | Marketing Manager | 24h | 3,000 |
| 27 | 3.11 | Establish campaign focus list |  | 1d | 2016-07-15 | 2016-07-15 | 26 | 0d |  | Marketing Manager | 8h | 600 |
| 28 | 3.12 | Establish campaign categories |  | 1d | 2016-07-18 | 2016-07-18 | 27 | 0d |  | Marketing Manager [25%] | 2h | 600 |
| 29 | 3.13 | Develop public relations strategy |  | 3d | 2016-07-19 | 2016-07-21 | 28 | 0d |  | Personal Relationship Manager | 24h | 1,440 |
| 30 | 3.14 | Establish preliminary ideal campaign timing for promotion |  | 1d | 2016-07-22 | 2016-07-22 | 29 | 0d |  | Marketing Manager | 8h | 600 |
| 31 | 3.15 | Determine organization regional campaigns |  | 2d | 2016-07-18 | 2016-07-19 | 27 | 1d | 0d | Marketing Manager [25%] | 4h | 3,000 |
| 32 | 3.16 | Determine organization global campaigns |  | 2d | 2016-07-18 | 2016-07-19 | 27 | 1d | 0d | Marketing Manager [25%] | 4h | 3,000 |
| 33 | 3.17 | Determine organization country campaigns |  | 2d | 2016-07-18 | 2016-07-19 | 27 | 1d | 0d | Marketing Manager [25%] | 4h | 3,000 |
| 34 | 3.18 | Identify localization requirements |  | 2d | 2016-07-20 | 2016-07-21 | 32, 31, 33 | 1d |  | Marketing Manager | 16h | 3,000 |
| 35 | 3.19 | Campaign Concepts Complete | milestone | 0d | 2016-07-22 | 2016-07-22 | 34, 30 | 0d |  | Project Manager |  |  |

| ID | WBS | Task | Type | Duration | Start | Finish | Predecessors | Total slack | Free slack | Resources | Work | Cost |
| --- | --- | --- | --- | --- | --- | --- | --- | --- | --- | --- | --- | --- |
| 36 | 4 | **Create Localization Strategy** |  | 12d | 2016-07-25 | 2016-08-09 |  | 0d |  |  | 112h | 34,320 |
| 37 | 4.1 | Review corporate sales objectives |  | 1d | 2016-07-25 | 2016-07-25 | 35 | 0d |  | Marketing Manager [20%] | 1.6h | 600 |
| 38 | 4.2 | Review regional business models |  | 1d | 2016-07-25 | 2016-07-25 | 35 | 0d |  | Marketing Manager [20%] | 1.6h | 600 |
| 39 | 4.3 | Review global/country business models |  | 1d | 2016-07-25 | 2016-07-25 | 35 | 0d |  | Marketing Manager [20%] | 1.6h | 600 |
| 40 | 4.4 | Review marketing objectives |  | 1d | 2016-07-25 | 2016-07-25 | 35 | 0d |  | Marketing Manager [20%] | 1.6h | 600 |
| 41 | 4.5 | Review marketing plan |  | 1d | 2016-07-25 | 2016-07-25 | 35 | 0d |  | Marketing Manager [20%] | 1.6h | 600 |
| 42 | 4.6 | Establish campaign opportunities |  | 2d | 2016-07-26 | 2016-07-27 | 40, 39, 37, 38, 41 | 0d |  | Marketing Manager | 16h | 1,800 |
| 43 | 4.7 | Review services and product mix and forecast |  | 2d | 2016-07-28 | 2016-07-29 | 42 | 0d |  | Marketing Manager | 16h | 1,800 |
| 44 | 4.8 | Review product release cycles |  | 1d | 2016-08-01 | 2016-08-01 | 43 | 4d |  | Marketing Manager [50%] | 4h | 1,800 |
| 45 | 4.9 | Determine campaign mix for each region |  | 1d | 2016-08-01 | 2016-08-01 | 43 | 0d |  | Marketing Manager [50%] | 4h | 1,800 |
| 46 | 4.10 | Determine campaign success measures for each region |  | 2d | 2016-08-02 | 2016-08-03 | 45 | 0d |  | Marketing Manager; Project Manager | 32h | 3,960 |
| 47 | 4.11 | Determine tracking mechanism |  | 2d | 2016-08-04 | 2016-08-05 | 46 | 0d |  | Marketing Manager | 16h | 1,800 |
| 48 | 4.12 | Create localization strategy |  | 2d | 2016-08-08 | 2016-08-09 | 44, 45, 47 | 0d |  | Marketing Manager | 16h | 1,200 |
| 49 | 4.13 | Localization Strategy Complete | milestone | 0d | 2016-08-09 | 2016-08-09 | 48 | 0d |  | Project Manager |  |  |
| 50 | 5 | **Communicate and Train Internal Organization** |  | 9d | 2016-08-10 | 2016-08-22 |  | 0d |  |  | 59.6h | 46,240 |
| 51 | 5.1 | Establish corporate internal communications process |  | 1d | 2016-08-10 | 2016-08-10 | 49 | 0d |  | Marketing Manager [20%] | 1.6h | 1,800 |
| 52 | 5.2 | Determine regional and country division communications process |  | 1d | 2016-08-11 | 2016-08-11 | 51 | 0d |  | Marketing Manager [25%] | 2h | 3,000 |
| 53 | 5.3 | Plan communications methods, logistics, and timing |  | 1d | 2016-08-12 | 2016-08-12 | 52 | 0d |  | SME; Marketing Manager [25%] | 10h | 8,480 |
| 54 | 5.4 | Regional and country communications to sales, marketing, and management |  | 1d | 2016-08-15 | 2016-08-15 | 53 | 0d |  | Marketing Manager [30%] | 2.4h | 3,000 |
| 55 | 5.5 | Determine internal systems to respond to campaign |  | 3d | 2016-08-16 | 2016-08-18 | 54 | 0d |  | Marketing Manager | 24h | 3,000 |
| 56 | 5.6 | Create communications plan |  | 2d | 2016-08-19 | 2016-08-22 | 55 | 0d |  | Project Manager | 16h | 1,440 |
| 57 | 5.7 | Identify internal training requirements |  | 1d | 2016-08-10 | 2016-08-10 | 49 | 7d | 0d | Marketing Manager [20%] | 1.6h | 600 |
| 58 | 5.8 | Develop internal training |  | 1d | 2016-08-11 | 2016-08-11 | 57 | 7d |  | Marketing Manager [25%] | 2h | 1,800 |
| 59 | 5.9 | Organization Internal Communications and Training Complete | milestone | 0d | 2016-08-22 | 2016-08-22 | 58, 56 | 0d |  | Project Manager |  |  |

| ID | WBS | Task | Type | Duration | Start | Finish | Predecessors | Total slack | Free slack | Resources | Work | Cost |
| --- | --- | --- | --- | --- | --- | --- | --- | --- | --- | --- | --- | --- |
| 60 | 6 | **Customer Relationship Management** |  | 4d | 2016-08-10 | 2016-08-15 |  | 5d |  |  | 11.6h | 22,800 |
| 61 | 6.1 | Review customer data and feedback |  | 1d | 2016-08-10 | 2016-08-10 | 49 | 5d | 0d | Marketing Manager [20%] | 1.6h | 1,800 |
| 62 | 6.2 | Review company segments and channels |  | 1d | 2016-08-10 | 2016-08-10 | 49 | 5d | 0d | Marketing Manager [20%] | 1.6h | 1,800 |
| 63 | 6.3 | Identify targets for each campaign |  | 1d | 2016-08-11 | 2016-08-11 | 62, 61 | 5d | 0d | Analyst [50%] | 4h | 1,800 |
| 64 | 6.4 | Segment data for each campaign |  | 1d | 2016-08-12 | 2016-08-12 | 63 | 5d | 0d | Marketing Manager [25%] | 2h | 3,000 |
| 65 | 6.5 | Prepare/procure lists for each campaign |  | 1d | 2016-08-15 | 2016-08-15 | 64 | 5d | 0d | Marketing Manager [30%] | 2.4h | 3,000 |
| 66 | 6.6 | Customer Relationship Management Complete | milestone | 0d | 2016-08-15 | 2016-08-15 | 65 | 5d |  | Project Manager |  |  |
| 67 | 7 | **Analyze Regional/Global/Country Business Models** |  | 5d | 2016-08-10 | 2016-08-16 |  | 4d |  |  | 25.6h | 13,200 |
| 68 | 7.1 | Establish target regions |  | 1d | 2016-08-10 | 2016-08-10 | 49 | 4d | 0d | Marketing Manager [20%] | 1.6h | 600 |
| 69 | 7.2 | Determine local gaps |  | 1d | 2016-08-11 | 2016-08-11 | 68 | 4d | 0d | Marketing Manager [25%] | 2h | 1,200 |
| 70 | 7.3 | Review local competition |  | 1d | 2016-08-12 | 2016-08-12 | 69 | 4d | 0d | Analyst [50%] | 4h | 1,800 |
| 71 | 7.4 | Develop competitive advantage |  | 1d | 2016-08-15 | 2016-08-15 | 70 | 4d | 0d | Marketing Manager [25%]; Analyst | 10h | 2,400 |
| 72 | 7.5 | Identify go-to partners |  | 1d | 2016-08-16 | 2016-08-16 | 71 | 4d | 0d | Analyst | 8h | 600 |
| 73 | 7.6 | Regional/Global/Country Business Models Complete | milestone | 0d | 2016-08-16 | 2016-08-16 | 72 | 4d |  | Project Manager |  |  |
| 74 | 8 | **Develop Campaign** |  | 14d | 2016-08-23 | 2016-09-09 |  | 0d |  |  | 112h | 17,600 |
| 75 | 8.1 | Review campaign concepts |  | 2d | 2016-08-23 | 2016-08-24 | 66, 73, 59 | 0d |  | Marketing Manager | 16h | 1,200 |
| 76 | 8.2 | Create campaign list |  | 1d | 2016-08-25 | 2016-08-25 | 75 | 0d |  | Marketing Manager | 8h | 600 |
| 77 | 8.3 | Identify campaign leads |  | 1d | 2016-08-26 | 2016-08-26 | 76 | 0d |  | Marketing Manager | 8h | 600 |
| 78 | 8.4 | Develop Individual campaigns |  | 1d | 2016-08-29 | 2016-08-29 | 77 | 0d |  | Vendor | 8h | 1,000 |
| 79 | 8.5 | Develop campaign schedules |  | 2d | 2016-08-30 | 2016-08-31 | 78 | 0d |  | Marketing Manager | 16h | 1,200 |
| 80 | 8.6 | Determine calls to action |  | 2d | 2016-09-01 | 2016-09-02 | 79 | 0d |  | Marketing Manager | 16h | 1,200 |
| 81 | 8.7 | Determine advertising/promotion methods and mix |  | 5d | 2016-09-05 | 2016-09-09 | 80 | 0d |  | Marketing Manager | 40h | 3,000 |
| 82 | 8.8 | Campaign Development Complete | milestone | 0d | 2016-09-09 | 2016-09-09 | 81 | 0d |  | Project Manager |  |  |
| 83 | 9 | **Develop Campaign Creative and Testing** |  | 23d | 2016-09-12 | 2016-10-12 |  | 0d |  |  | 232h | 34,560 |
| 84 | 9.1 | Select vendor for creative |  | 2d | 2016-09-12 | 2016-09-13 | 82 | 0d |  | Marketing Manager | 16h | 1,200 |
| 85 | 9.2 | Determine campaign voice/messaging style |  | 3d | 2016-09-14 | 2016-09-16 | 84 | 0d |  | Marketing Manager; Creative Designer | 48h | 2,880 |
| 86 | 9.3 | Develop concepts and comps |  | 3d | 2016-09-19 | 2016-09-21 | 85 | 0d |  | Creative Designer | 24h | 1,800 |
| 87 | 9.4 | Select creative for campaign |  | 3d | 2016-09-22 | 2016-09-26 | 86 | 0d |  | Marketing Manager; Sponsor | 48h | 3,000 |
| 88 | 9.5 | Prepare pretest materials |  | 3d | 2016-09-27 | 2016-09-29 | 87 | 0d |  | Marketing Manager | 24h | 3,000 |
| 89 | 9.6 | Pretest campaign |  | 3d | 2016-09-30 | 2016-10-04 | 88 | 0d |  | Marketing Manager | 24h | 3,000 |
| 90 | 9.7 | Determine if pretest creative achieves objectives |  | 1d | 2016-10-05 | 2016-10-05 | 89 | 0d |  | Marketing Manager | 8h | 600 |
| 91 | 9.8 | Improve creative based on pretest results |  | 5d | 2016-10-06 | 2016-10-12 | 90 | 0d |  | Creative Designer | 40h | 1,800 |
| 92 | 9.9 | Campaign Creative and Testing Complete | milestone | 0d | 2016-10-12 | 2016-10-12 | 91 | 0d |  | Project Manager |  |  |

| ID | WBS | Task | Type | Duration | Start | Finish | Predecessors | Total slack | Free slack | Resources | Work | Cost |
| --- | --- | --- | --- | --- | --- | --- | --- | --- | --- | --- | --- | --- |
| 93 | 10 | **Develop Strategy for External Promotions** |  | 5d | 2016-10-13 | 2016-10-19 |  | 0d |  |  | 80h | 66,480 |
| 94 | 10.1 | Develop promotion strategy |  | 1d | 2016-10-13 | 2016-10-13 | 92 | 0d |  | Personal Relationship Manager [25%]; Marketing Manager | 10h | 2,160 |
| 95 | 10.2 | Develop press releases |  | 1d | 2016-10-14 | 2016-10-14 | 94 | 0d |  | Vendor [25%]; Personal Relationship Manager [25%] | 4h | 5,920 |
| 96 | 10.3 | Develop announcements |  | 1d | 2016-10-14 | 2016-10-14 | 94 | 0d |  | Personal Relationship Manager [25%]; Vendor [25%] | 4h | 5,920 |
| 97 | 10.4 | Provide pre-release information to analysts |  | 3d | 2016-10-17 | 2016-10-19 | 95, 96 | 0d |  | Personal Relationship Manager; Vendor | 48h | 4,440 |
| 98 | 10.5 | Generate 'buzz' |  | 1d | 2016-10-14 | 2016-10-14 | 94 | 3d |  | Vendor [25%]; Personal Relationship Manager [25%] | 4h | 7,400 |
| 99 | 10.6 | Execute publicity strategy |  | 1d | 2016-10-13 | 2016-10-13 | 92 | 4d |  | Personal Relationship Manager [25%]; Vendor | 10h | 7,400 |
| 100 | 10.7 | Promotion - External Complete | milestone | 0d | 2016-10-19 | 2016-10-19 | 99, 98, 97 | 0d |  | Project Manager |  |  |
| 101 | 11 | **Production** |  | 14d | 2016-10-20 | 2016-11-08 |  | 0d |  |  | 108h | 24,800 |
| 102 | 11.1 | Submit campaign material for broadcast publications |  | 3d | 2016-10-20 | 2016-10-24 | 100 | 0d |  | Marketing Manager | 24h | 1,800 |
| 103 | 11.2 | Select vendor for appropriate production methods |  | 1d | 2016-10-25 | 2016-10-25 | 102 | 20.5d | 0d | Marketing Manager [50%] | 4h | 600 |
| 104 | 11.3 | Production of materials |  | 5d | 2016-10-26 | 2016-11-01 | 103 | 20.5d | 0d | Vendor | 40h | 5,000 |
| 105 | 11.4 | Dissemination of materials |  | 5d | 2016-11-02 | 2016-11-08 | 104 | 20.5d | 0d | Vendor | 40h | 5,000 |
| 106 | 11.5 | Production Complete | milestone | 0d | 2016-11-08 | 2016-11-08 | 105 | 20.5d |  | Project Manager |  |  |
| 107 | 12 | **Campaign Release** |  | 13.5d | 2016-10-25 | 2016-11-11 |  | 0d |  |  | 156h | 19,600 |
| 108 | 12.1 | Develop campaign release schedules |  | 1d | 2016-10-25 | 2016-10-25 | 102 | 0d |  | Marketing Manager [50%] | 4h | 1,200 |
| 109 | 12.2 | Determine release teams |  | 1d | 2016-10-26 | 2016-10-26 | 108 | 0d |  | Marketing Manager | 8h | 600 |
| 110 | 12.3 | Perform Inside sales calls |  | 6.5d | 2016-10-27 | 2016-11-04 | 109 | 0d |  | Sales Associate; Marketing Manager | 104h | 5,000 |
| 111 | 12.4 | Execute campaign |  | 5d | 2016-11-04 | 2016-11-11 | 110 | 0d |  | Marketing Manager | 40h | 3,000 |
| 112 | 12.5 | Campaign Release Complete | milestone | 0d | 2016-11-11 | 2016-11-11 | 111 | 0d |  | Project Manager |  |  |
| 113 | 13 | **Campaign Effectiveness** |  | 18d | 2016-11-11 | 2016-12-07 |  | 0d |  |  | 144h | 28,000 |
| 114 | 13.1 | Evaluate campaign effectiveness |  | 1d | 2016-11-11 | 2016-11-14 | 112 | 5d |  | Marketing Manager [25%] | 2h | 1,800 |
| 115 | 13.2 | Review regional sales |  | 1d | 2016-11-11 | 2016-11-14 | 112 | 0d |  | Sales Associate; Marketing Manager [25%] | 10h | 1,000 |
| 116 | 13.3 | Review global sales |  | 1d | 2016-11-14 | 2016-11-15 | 115 | 0d |  | Sales Associate; Marketing Manager [25%] | 10h | 1,000 |
| 117 | 13.4 | Review customer data and feedback |  | 1d | 2016-11-15 | 2016-11-16 | 116 | 0d |  | Marketing Manager [25%] | 2h | 1,200 |
| 118 | 13.5 | Perform market analysis |  | 3d | 2016-11-16 | 2016-11-21 | 117 | 0d |  | Analyst | 24h | 1,800 |
| 119 | 13.6 | Review success measures |  | 3d | 2016-11-21 | 2016-11-24 | 114, 117, 116, 115, 118 | 0d |  | Marketing Manager | 24h | 1,800 |
| 120 | 13.7 | Measure campaign effectiveness |  | 3d | 2016-11-24 | 2016-11-29 | 119 | 0d |  | Marketing Manager | 24h | 1,800 |
| 121 | 13.8 | Identify any gaps |  | 1d | 2016-11-29 | 2016-11-30 | 120 | 0d |  | Marketing Manager | 8h | 600 |
| 122 | 13.9 | Develop future campaign ideas |  | 5d | 2016-11-30 | 2016-12-07 | 121 | 0d |  | Marketing Manager | 40h | 3,000 |
| 123 | 13.10 | Campaign Effectiveness Complete | milestone | 0d | 2016-12-07 | 2016-12-07 | 122 | 0d |  | Project Manager |  |  |
| 124 | 14 | Marketing Campaign Planning Complete | milestone | 0d | 2016-12-07 | 2016-12-07 | 123 | 0d |  | Project Manager |  |  |
| 125 | 15 | Project Complete | milestone | 0d | 2016-12-07 | 2016-12-07 | 124 | 0d |  |  |  |  |
