# Trey_Slide_Presenter_Resources

Schedule from MS Project, 2016-08-01 to 2016-11-30.

## Calendars

- Trey Research: Mon-Fri 08:00-12:00, 13:00-17:00; Sat-Sun off. Exceptions (off unless hours are given): 2016-05-30 to 2025-05-26 (Memorial Day, recurring), 2016-09-05 to 2025-09-01 (Labor Day, recurring), 2016-11-08 08:00-12:00 (Election Day).

## Resources

| Resource | Unit |
| --- | --- |
| Mable McDonald |  |
| Jeannette Bowman |  |
| Brittany Stuart |  |
| Margarita Steele |  |
| Juan Madera |  |
| Draft Quality Paper | carton |
| final Quality Paper | carton |
| Travel expensis |  |

## Schedule

| ID | WBS | Task | Type | Duration | Start | Finish | Predecessors | Total slack | Free slack | Constraint |
| --- | --- | --- | --- | --- | --- | --- | --- | --- | --- | --- |
| 1 | 1 | **Phase 1 - High-Level Planning** |  | 14d | 2016-08-01 | 2016-08-18 |  | 1d |  |  |
| 2 | 1.1 | Determine sales objectives |  | 1d | 2016-08-01 | 2016-08-01 |  | 1d | 0d |  |
| 3 | 1.2 | Define launch goals (launch timing and publicity objectives) |  | 1d | 2016-08-02 | 2016-08-02 | 2 | 1d | 0d |  |
| 4 | 1.3 | **Establish Launch Budget** |  | 12d | 2016-08-03 | 2016-08-18 |  | 1d |  |  |
| 5 | 1.3.1 | Identify budget requirements |  | 1d | 2016-08-03 | 2016-08-03 | 3 | 1d | 0d |  |
| 6 | 1.3.2 | Obtain launch budget approval |  | 5d | 2016-08-11 | 2016-08-18 | 5FS+5d | 1d | 0d |  |
| 7 | 2 | High-Level Planning Complete | milestone | 0d | 2016-08-18 | 2016-08-18 | 6 | 1d | 0d |  |
| 8 | 3 | **Phase 2 - Detailed Planning** |  | 13d | 2016-08-19 | 2016-09-07 |  | 0d |  |  |
| 9 | 3.1 | Kickoff product launch |  | 1d | 2016-08-19 | 2016-08-19 | 7 | 1d | 0d |  |
| 10 | 3.2 | **Marketing** |  | 3d | 2016-08-22 | 2016-08-24 |  | 0d |  |  |
| 11 | 3.2.1 | Define press release requirements |  | 1d | 2016-08-22 | 2016-08-22 | 9 | 2d |  |  |
| 12 | 3.2.2 | Define sales presentations |  | 2d | 2016-08-23 | 2016-08-24 | 9 | 0d |  | start no earlier than 2016-08-23 |
| 13 | 3.2.3 | Define product specification literature |  | 2d | 2016-08-22 | 2016-08-23 | 9 | 1d |  |  |
| 14 | 3.2.4 | Define internal communication needs |  | 1d | 2016-08-22 | 2016-08-22 | 9 | 2d |  |  |
| 15 | 3.3 | **Engineering** |  | 2d | 2016-08-25 | 2016-08-26 |  | 0d |  |  |
| 16 | 3.3.1 | Align product release timing with marketing plan |  | 2d | 2016-08-25 | 2016-08-26 | 14, 11, 12, 13 | 0d |  |  |
| 17 | 3.4 | **Manufacturing** |  | 2d | 2016-08-29 | 2016-08-30 |  | 0d |  |  |
| 18 | 3.4.1 | Prepare for volume manufacturing according to sales goals |  | 2d | 2016-08-29 | 2016-08-30 | 16 | 0d |  |  |
| 19 | 3.5 | **Sales** |  | 2d | 2016-08-31 | 2016-09-01 |  | 0d |  |  |
| 20 | 3.5.1 | Plan sales force staffing and training to support sales goals |  | 2d | 2016-08-31 | 2016-09-01 | 18 | 0d |  |  |
| 21 | 3.6 | **Product Support** |  | 3d | 2016-09-02 | 2016-09-07 |  | 0d |  |  |
| 22 | 3.6.1 | Plan team staffing to support sales goals |  | 3d | 2016-09-02 | 2016-09-07 | 20 | 0d |  |  |
| 23 | 4 | Detailed Planning Complete | milestone | 0d | 2016-09-07 | 2016-09-07 | 22 | 0d |  |  |
| 24 | 5 | **Phase 3 - Execution** |  | 55d | 2016-09-08 | 2016-11-24 |  | 0d |  |  |
| 25 | 5.1 | **Marketing** |  | 22d | 2016-09-08 | 2016-10-07 |  | 0d |  |  |
| 26 | 5.1.1 | Evaluate market and refine messaging |  | 1d | 2016-09-08 | 2016-09-08 | 23 | 0d |  |  |
| 27 | 5.1.2 | Create press releases |  | 2d | 2016-09-09 | 2016-09-12 | 26 | 0d |  |  |
| 28 | 5.1.3 | Create product specification literature |  | 5d | 2016-09-13 | 2016-09-19 | 27 | 0d |  |  |
| 29 | 5.1.4 | Create sales presentations |  | 5d | 2016-09-20 | 2016-09-26 | 28 | 0d |  |  |
| 30 | 5.1.5 | Create sales, field, and product support training |  | 5d | 2016-09-27 | 2016-10-03 | 29 | 0d |  |  |
| 31 | 5.1.6 | Update product forecasts based on market feedback and analysis |  | 2d | 2016-10-04 | 2016-10-05 | 30 | 0d |  |  |
| 32 | 5.1.7 | Update launch plan based on forecast |  | 2d | 2016-10-06 | 2016-10-07 | 31 | 37d |  |  |

Notes:
- 12: This is a good presentation to start with, and to modify.
- 15: Engineering has its own set of plans that it will follow.
- 26: Market receptivity is evaluated by key customer feedback, focus groups, test markets, or beta tests.

| ID | WBS | Task | Type | Duration | Start | Finish | Predecessors | Total slack | Free slack |
| --- | --- | --- | --- | --- | --- | --- | --- | --- | --- |
| 33 | 5.2 | **Engineering** |  | 30d | 2016-09-08 | 2016-10-19 |  | 4d |  |
| 34 | 5.2.1 | Complete and test product |  | 30d | 2016-09-08 | 2016-10-19 | 26SS | 4d | 0d |
| 35 | 5.3 | **Manufacturing** |  | 25d | 2016-10-20 | 2016-11-24 |  | 4d |  |
| 36 | 5.3.1 | Create prototype products |  | 20d | 2016-10-20 | 2016-11-17 | 34 | 4d | 0d |
| 37 | 5.3.2 | Prepare pipeline |  | 5d | 2016-11-17 | 2016-11-24 | 36 | 4d |  |
| 38 | 5.4 | **Sales** |  | 2d | 2016-10-06 | 2016-10-07 |  | 0d |  |
| 39 | 5.4.1 | Establish sales channels |  | 2d | 2016-10-06 | 2016-10-07 | 31 | 0d |  |
| 40 | 5.5 | **Product Support** |  | 2d | 2016-10-10 | 2016-10-11 |  | 0d |  |
| 41 | 5.5.1 | Establish product support mechanisms |  | 2d | 2016-10-10 | 2016-10-11 | 39 | 0d |  |
| 42 | 6 | Execution Phase Complete | milestone | 0d | 2016-10-11 | 2016-10-11 | 41 | 0d |  |
| 43 | 7 | **Phase 4 - Release To Manufacture** |  | 35d | 2016-10-12 | 2016-11-30 |  | 0d |  |
| 44 | 7.1 | **Manufacturing** |  | 35d | 2016-10-12 | 2016-11-30 |  | 0d |  |
| 45 | 7.1.1 | Certify product |  | 5d | 2016-10-12 | 2016-10-18 | 42 | 0d |  |
| 46 | 7.1.2 | Manufacture the volume of product planned to meet sales objectives. |  | 30d | 2016-10-19 | 2016-11-30 | 45 | 0d |  |
| 47 | 7.2 | **Sales** |  | 10d | 2016-10-20 | 2016-11-02 |  | 6d |  |
| 48 | 7.2.1 | Hire and train sales staff |  | 10d | 2016-10-20 | 2016-11-02 | 36SS | 6d | 0d |
| 49 | 7.3 | **Product Support** |  | 10d | 2016-11-03 | 2016-11-17 |  | 6d |  |
| 50 | 7.3.1 | Hire and train product support personnel |  | 10d | 2016-11-03 | 2016-11-17 | 48 | 6d | 0d |
| 51 | 7.4 | **Final Quality Review** |  | 3d | 2016-11-17 | 2016-11-22 |  | 6d |  |
| 52 | 7.4.1 | Conduct final quality review |  | 3d | 2016-11-17 | 2016-11-22 | 50 | 6d | 0d |
| 53 | 7.4.2 | Product Release Information Complete | milestone | 0d | 2016-11-22 | 2016-11-22 | 52 | 6d | 0d |
| 54 | 7.4.3 | Needed materials are on order or in stock. | milestone | 0d | 2016-11-22 | 2016-11-22 | 53 | 6d | 0d |
| 55 | 7.4.4 | Literature Complete | milestone | 0d | 2016-11-22 | 2016-11-22 | 54 | 6d | 0d |
| 56 | 7.4.5 | Training Complete | milestone | 0d | 2016-11-17 | 2016-11-17 | 48, 50 | 9d | 3d |
| 57 | 7.5 | Launch Product | milestone | 0d | 2016-11-22 | 2016-11-22 | 55, 56 | 6d |  |

Notes:
- 34: Product performance is evaluated through testing and qualification.
- 36: Production processes are developed initially using pilot production lines and later using actual production lines.
- 37: The distribution pipeline is filled with the appropriate level of product.
- 45: The product and the production process have been qualified or validated and all regulatory approvals and/or certifications have been obtained.
- 55: Advertising, product brochures, marketing materials, press releases, and Web pages have been prepared and are ready to distribute at the appropriate time.
- 56: Sales, service, and support personnel have been trained or a phased training program is underway.
- 57: The new product is launched when service, sales, and distribution channels are ready.
