# Trey_Slide_Presenter_Allocation

Schedule from MS Project, 2016-08-01 to 2017-01-24, costs in $.

## Calendars

- Trey Research: Mon-Fri 08:00-12:00, 13:00-17:00; Sat-Sun off. Exceptions (off unless hours are given): 2016-05-30 to 2025-05-26 (Memorial Day, recurring), 2016-09-05 to 2025-09-01 (Labor Day, recurring), 2016-11-08 08:00-12:00 (Election Day), 2016-11-24 to 2016-11-25 (Thanksgiving), 2016-12-26 (Christmas), 2017-01-02 (New Years Day), 2017-01-16 (MLK, Jr. Day).

## Resources

| Resource | Unit |
| --- | --- |
| Mable McDonald |  |
| Jeannette Bowman |  |
| Brittany Stuart |  |
| Margarita Steele |  |
| Juan Madera |  |
| Draft Quality Paper | cartons |
| Final Quality Paper | cartons |
| Travel Expenses |  |
| Winston Blanks |  |
| Humberto Maple |  |
| Kristine Rowe |  |
| Barbara Navarro |  |
| Edwin Witcher |  |
| Shannon Clemons |  |
| Cameron Kellum |  |
| Engineer 1 |  |
| Engineer 2 |  |
| Engineer 3 |  |

## Schedule

| ID | WBS | Task | Type | Duration | Start | Finish | Predecessors | Total slack | Free slack | Constraint | Resources | Work |
| --- | --- | --- | --- | --- | --- | --- | --- | --- | --- | --- | --- | --- |
| 1 | 1 | Begin Project | milestone | 0d | 2016-08-01 | 2016-08-01 |  | 2d | 0d |  |  |  |
| 2 | 2 | **Phase 1 - High-Level Planning** |  | 14d | 2016-08-01 | 2016-08-18 |  | 2d |  |  |  | 72h |
| 3 | 2.1 | Determine sales objectives |  | 1d | 2016-08-01 | 2016-08-01 | 1 | 117d |  |  | Mable McDonald; Shannon Clemons | 16h |
| 4 | 2.2 | Define launch goals (launch timing and publicity objectives) |  | 1d | 2016-08-02 | 2016-08-02 | 1 | 1d | 0d | start no earlier than 2016-08-02 | Mable McDonald | 8h |
| 5 | 2.3 | **Establish Launch Budget** |  | 12d | 2016-08-03 | 2016-08-18 |  | 1d |  |  |  | 48h |
| 6 | 2.3.1 | Identify budget requirements |  | 1d | 2016-08-03 | 2016-08-03 | 4 | 1d | 0d |  | Brittany Stuart | 8h |
| 7 | 2.3.2 | Obtain launch budget approval |  | 5d | 2016-08-11 | 2016-08-18 | 6FS+5d | 1d | 0d |  | Cameron Kellum | 40h |
| 8 | 3 | High-Level Planning Complete | milestone | 0d | 2016-08-18 | 2016-08-18 | 7 | 1d | 0d |  |  |  |
| 9 | 4 | **Phase 2 - Detailed Planning** |  | 13d | 2016-08-19 | 2016-09-07 |  | 0d |  |  |  | 176h |
| 10 | 4.1 | Kickoff product launch |  | 1d | 2016-08-19 | 2016-08-19 | 8 | 1d | 0d |  | Edwin Witcher | 8h |
| 11 | 4.2 | **Marketing** |  | 3d | 2016-08-22 | 2016-08-24 |  | 0d |  |  |  | 56h |
| 12 | 4.2.1 | Define press release requirements |  | 1d | 2016-08-22 | 2016-08-22 | 10 | 2d |  |  | Humberto Maple [50%] | 4h |
| 13 | 4.2.2 | Define sales presentations |  | 2d | 2016-08-23 | 2016-08-24 | 10 | 0d |  | start no earlier than 2016-08-23 | Juan Madera | 16h |
| 14 | 4.2.3 | Define product specification literature |  | 2d | 2016-08-22 | 2016-08-23 | 10 | 1d |  |  | Kristine Rowe; Mable McDonald | 32h |
| 15 | 4.2.4 | Define internal communication needs |  | 1d | 2016-08-22 | 2016-08-22 | 10 | 2d |  |  | Humberto Maple [50%] | 4h |
| 16 | 4.3 | **Engineering** |  | 2d | 2016-08-25 | 2016-08-26 |  | 0d |  |  |  | 16h |
| 17 | 4.3.1 | Align product release timing with marketing plan |  | 2d | 2016-08-25 | 2016-08-26 | 15, 12, 13, 14 | 0d |  |  | Winston Blanks | 16h |
| 18 | 4.4 | **Manufacturing** |  | 2d | 2016-08-29 | 2016-08-30 |  | 0d |  |  |  | 32h |
| 19 | 4.4.1 | Prepare for volume manufacturing according to sales goals |  | 2d | 2016-08-29 | 2016-08-30 | 17 | 0d |  |  | Engineer 1; Engineer 2 | 32h |
| 20 | 4.5 | **Sales** |  | 2d | 2016-09-06 | 2016-09-07 |  | 0d |  |  |  | 16h |
| 21 | 4.5.1 | Plan sales force staffing and training to support sales goals |  | 2d | 2016-09-06 | 2016-09-07 | 19 | 0d |  |  | Edwin Witcher | 16h |
| 22 | 4.6 | **Product Support** |  | 3d | 2016-08-31 | 2016-09-02 |  | 2d |  |  |  | 48h |
| 23 | 4.6.1 | Plan team staffing to support sales goals |  | 3d | 2016-08-31 | 2016-09-02 | 19 | 2d |  |  | Cameron Kellum; Edwin Witcher | 48h |
| 24 | 5 | Detailed Planning Complete | milestone | 0d | 2016-09-07 | 2016-09-07 | 23, 21 | 0d |  |  |  |  |

Notes:
- 13: This is a good presentation to start with, and to modify.
- 16: Engineering has its own set of plans that it will follow.

| ID | WBS | Task | Type | Duration | Start | Finish | Predecessors | Total slack | Free slack | Resources | Work | Cost |
| --- | --- | --- | --- | --- | --- | --- | --- | --- | --- | --- | --- | --- |
| 25 | 6 | **Phase 3 - Execution** |  | 55d | 2016-09-08 | 2016-11-28 |  | 0d |  |  | 1448h | 504 |
| 26 | 6.1 | **Marketing** |  | 22d | 2016-09-08 | 2016-10-07 |  | 0d |  |  | 176h |  |
| 27 | 6.1.1 | Evaluate market and refine messaging |  | 1d | 2016-09-08 | 2016-09-08 | 24 | 0d |  | Humberto Maple | 8h |  |
| 28 | 6.1.2 | Create press releases |  | 2d | 2016-09-09 | 2016-09-12 | 27 | 27d | 0d | Winston Blanks; Final Quality Paper [2 cartons] | 16h |  |
| 29 | 6.1.3 | Create product specification literature |  | 5d | 2016-09-13 | 2016-09-19 | 28 | 27d | 0d | Winston Blanks | 40h |  |
| 30 | 6.1.4 | Create sales presentations |  | 5d | 2016-09-20 | 2016-09-26 | 29 | 27d | 0d | Winston Blanks | 40h |  |
| 31 | 6.1.5 | Create sales, field, and product support training |  | 5d | 2016-09-27 | 2016-10-03 | 30 | 27d | 0d | Margarita Steele | 40h |  |
| 32 | 6.1.6 | Update product forecasts based on market feedback and analysis |  | 2d | 2016-10-04 | 2016-10-05 | 31 | 27d | 0d | Shannon Clemons | 16h |  |
| 33 | 6.1.7 | Update launch plan based on forecast |  | 2d | 2016-10-06 | 2016-10-07 | 32 | 31d | 2d | Winston Blanks | 16h |  |
| 34 | 6.2 | **Engineering** |  | 30d | 2016-09-08 | 2016-10-19 |  | 0d |  |  | 720h |  |
| 35 | 6.2.1 | Complete and test product |  | 30d | 2016-09-08 | 2016-10-19 | 27SS | 0d |  | Engineer 1; Engineer 2; Engineer 3 | 720h |  |
| 36 | 6.3 | **Manufacturing** |  | 25d | 2016-10-20 | 2016-11-28 |  | 0d |  |  | 520h |  |
| 37 | 6.3.1 | Create prototype products |  | 20d | 2016-10-20 | 2016-11-17 | 35 | 0d |  | Engineer 1; Engineer 2; Engineer 3 | 480h |  |
| 38 | 6.3.2 | Prepare pipeline |  | 5d | 2016-11-17 | 2016-11-28 | 37 | 0d |  | Edwin Witcher | 40h |  |
| 39 | 6.4 | **Sales** |  | 2d | 2016-10-10 | 2016-10-11 |  | 29d |  |  | 16h |  |
| 40 | 6.4.1 | Establish sales channels |  | 2d | 2016-10-10 | 2016-10-11 | 32 | 29d | 0d | Winston Blanks | 16h |  |
| 41 | 6.5 | **Product Support** |  | 2d | 2016-10-12 | 2016-10-13 |  | 29d |  |  | 16h | 504 |
| 42 | 6.5.1 | Establish product support mechanisms |  | 2d | 2016-10-12 | 2016-10-13 | 40, 33 | 29d |  | Mable McDonald | 16h | 504 |
| 43 | 7 | Execution Phase Complete | milestone | 0d | 2016-11-28 | 2016-11-28 | 42, 38 | 0d |  |  |  |  |
| 44 | 8 | **Phase 4 - Release To Manufacture** |  | 63d | 2016-10-20 | 2017-01-24 |  | 0d |  |  | 984h |  |
| 45 | 8.1 | **Manufacturing** |  | 35d | 2016-11-28 | 2017-01-19 |  | 0d |  |  | 800h |  |
| 46 | 8.1.1 | Certify product |  | 5d | 2016-11-28 | 2016-12-05 | 43 | 0d |  | Engineer 1; Juan Madera | 80h |  |
| 47 | 8.1.2 | Manufacture the volume of product planned to meet sales objectives. |  | 30d | 2016-12-05 | 2017-01-19 | 46 | 0d |  | Engineer 1; Engineer 2; Engineer 3 | 720h |  |
| 48 | 8.2 | **Sales** |  | 10d | 2016-11-03 | 2016-11-17 |  | 43d | 53d |  | 80h |  |
| 49 | 8.2.1 | Hire and train sales staff |  | 10d | 2016-11-03 | 2016-11-17 | 37SS | 43d | 0d | Winston Blanks | 80h |  |

Notes:
- 27: Market receptivity is evaluated by key customer feedback, focus groups, test markets, or beta tests.
- 35: Product performance is evaluated through testing and qualification.
- 37: Production processes are developed initially using pilot production lines and later using actual production lines.
- 38: The distribution pipeline is filled with the appropriate level of product.
- 46: The product and the production process have been qualified or validated and all regulatory approvals and/or certifications have been obtained.

| ID | WBS | Task | Type | Duration | Start | Finish | Predecessors | Total slack | Free slack | Resources | Work |
| --- | --- | --- | --- | --- | --- | --- | --- | --- | --- | --- | --- |
| 50 | 8.3 | **Product Support** |  | 10d | 2016-10-20 | 2016-11-02 |  | 50d |  |  | 80h |
| 51 | 8.3.1 | Hire and train product support personnel |  | 10d | 2016-10-20 | 2016-11-02 | 37SS | 50d | 10d | Winston Blanks | 80h |
| 52 | 8.4 | **Final Quality Review** |  | 43d | 2016-11-17 | 2017-01-24 |  | 0d |  |  | 24h |
| 53 | 8.4.1 | Conduct final quality review |  | 3d | 2017-01-19 | 2017-01-24 | 51, 47 | 0d |  | Barbara Navarro | 24h |
| 54 | 8.4.2 | Product Release Information Complete | milestone | 0d | 2017-01-24 | 2017-01-24 | 53 | 0d |  |  |  |
| 55 | 8.4.3 | Needed materials are on order or in stock. | milestone | 0d | 2017-01-24 | 2017-01-24 | 54 | 0d |  |  |  |
| 56 | 8.4.4 | Literature Complete | milestone | 0d | 2017-01-24 | 2017-01-24 | 55 | 0d |  |  |  |
| 57 | 8.4.5 | Training Complete | milestone | 0d | 2016-11-17 | 2016-11-17 | 49, 51 | 43d |  |  |  |
| 58 | 8.5 | Launch Product | milestone | 0d | 2017-01-24 | 2017-01-24 | 56, 57 | 0d |  |  |  |

Notes:
- 56: Advertising, product brochures, marketing materials, press releases, and Web pages have been prepared and are ready to distribute at the appropriate time.
- 57: Sales, service, and support personnel have been trained or a phased training program is underway.
- 58: The new product is launched when service, sales, and distribution channels are ready.
