# Trey_Slide_Presenter_Tracking

Schedule from MS Project, 2016-08-01 to 2017-01-10, costs in $.

## Calendars

- Trey Research: Mon-Fri 08:00-12:00, 13:00-17:00; Sat-Sun off. Exceptions (off unless hours are given): 2016-05-30 to 2025-05-26 (Memorial Day, recurring), 2016-09-05 to 2025-09-01 (Labor Day, recurring), 2016-11-08 08:00-12:00 (Election Day).

## Resources

| Resource | Unit |
| --- | --- |
| Mable McDonald |  |
| Jeannette Bowman |  |
| Brittany Stuart |  |
| Margarita Steele |  |
| Juan Madera |  |
| Draft Quality Paper | cartons |
| Final Quality Paper | cartons |
| Travel Expenses |  |
| Winston Blanks |  |
| Humberto Maple |  |
| Kristine Rowe |  |
| Barbara Navarro |  |
| Edwin Witcher |  |
| Shannon Clemons |  |
| Cameron Kellum |  |

## Schedule

| ID | WBS | Task | Type | Duration | Start | Finish | Predecessors | Baseline start | Baseline finish | Baseline duration | Total slack | Free slack | Constraint | Resources | Work | Cost | Baseline cost |
| --- | --- | --- | --- | --- | --- | --- | --- | --- | --- | --- | --- | --- | --- | --- | --- | --- | --- |
| 1 | 1 | **Phase 1 - High-Level Planning** |  | 14d | 2016-08-01 | 2016-08-18 |  | 2016-08-01 | 2016-08-18 | 14d | 1d |  |  |  | 72h | 100 | 100 |
| 2 | 1.1 | Determine sales objectives |  | 1d | 2016-08-01 | 2016-08-01 |  | 2016-08-01 | 2016-08-01 | 1d | 1d | 0d |  | Mable McDonald; Shannon Clemons | 16h |  |  |
| 3 | 1.2 | Define launch goals (launch timing and publicity objectives) |  | 1d | 2016-08-02 | 2016-08-02 | 2 | 2016-08-02 | 2016-08-02 | 1d | 1d | 0d |  | Jeannette Bowman | 8h |  |  |
| 4 | 1.3 | **Establish Launch Budget** |  | 12d | 2016-08-03 | 2016-08-18 |  | 2016-08-03 | 2016-08-18 | 12d | 1d |  |  |  | 48h | 100 | 100 |
| 5 | 1.3.1 | Identify budget requirements |  | 1d | 2016-08-03 | 2016-08-03 | 3 | 2016-08-03 | 2016-08-03 | 1d | 1d | 0d |  | Brittany Stuart; Travel Expenses [0.1%] | 8h | 100 | 100 |
| 6 | 1.3.2 | Obtain launch budget approval |  | 5d | 2016-08-11 | 2016-08-18 | 5FS+5d | 2016-08-11 | 2016-08-18 | 5d | 1d | 0d |  | Cameron Kellum | 40h |  |  |
| 7 | 2 | High-Level Planning Complete | milestone | 0d | 2016-08-18 | 2016-08-18 | 6 | 2016-08-18 | 2016-08-18 | 0d | 1d | 0d |  |  |  |  |  |
| 8 | 3 | **Phase 2 - Detailed Planning** |  | 13d | 2016-08-19 | 2016-09-07 |  | 2016-08-19 | 2016-09-07 | 13d | 0d |  |  |  | 156h |  |  |
| 9 | 3.1 | Kickoff product launch |  | 1d | 2016-08-19 | 2016-08-19 | 7 | 2016-08-19 | 2016-08-19 | 1d | 1d | 0d |  | Edwin Witcher | 8h |  |  |
| 10 | 3.2 | **Marketing** |  | 3d | 2016-08-22 | 2016-08-24 |  | 2016-08-22 | 2016-08-24 | 3d | 0d |  |  |  | 60h |  |  |
| 11 | 3.2.1 | Define press release requirements |  | 1d | 2016-08-22 | 2016-08-22 | 9 | 2016-08-22 | 2016-08-22 | 1d | 2d |  |  | Humberto Maple [50%] | 4h |  |  |
| 12 | 3.2.2 | Define sales presentations |  | 2d | 2016-08-23 | 2016-08-24 | 9 | 2016-08-23 | 2016-08-24 | 2d | 0d |  | start no earlier than 2016-08-23 | Juan Madera | 16h |  |  |
| 13 | 3.2.3 | Define product specification literature |  | 2d | 2016-08-22 | 2016-08-23 | 9 | 2016-08-22 | 2016-08-23 | 2d | 1d |  |  | Kristine Rowe; Mable McDonald | 32h |  |  |
| 14 | 3.2.4 | Define internal communication needs |  | 1d | 2016-08-22 | 2016-08-22 | 9 | 2016-08-22 | 2016-08-22 | 1d | 2d |  |  | Shannon Clemons | 8h |  |  |
| 15 | 3.3 | **Engineering** |  | 2d | 2016-08-25 | 2016-08-26 |  | 2016-08-25 | 2016-08-26 | 2d | 0d |  |  |  | 16h |  |  |
| 16 | 3.3.1 | Align product release timing with marketing plan |  | 2d | 2016-08-25 | 2016-08-26 | 14, 11, 12, 13 | 2016-08-25 | 2016-08-26 | 2d | 0d |  |  | Winston Blanks | 16h |  |  |
| 17 | 3.4 | **Manufacturing** |  | 2d | 2016-08-29 | 2016-08-30 |  | 2016-08-29 | 2016-08-30 | 2d | 0d |  |  |  | 32h |  |  |
| 18 | 3.4.1 | Prepare for volume manufacturing according to sales goals |  | 2d | 2016-08-29 | 2016-08-30 | 16 | 2016-08-29 | 2016-08-30 | 2d | 0d |  |  | Winston Blanks; Shannon Clemons | 32h |  |  |
| 19 | 3.5 | **Sales** |  | 2d | 2016-08-31 | 2016-09-01 |  | 2016-08-31 | 2016-09-01 | 2d | 0d |  |  |  | 16h |  |  |
| 20 | 3.5.1 | Plan sales force staffing and training to support sales goals |  | 2d | 2016-08-31 | 2016-09-01 | 18 | 2016-08-31 | 2016-09-01 | 2d | 0d |  |  | Mable McDonald | 16h |  |  |
| 21 | 3.6 | **Product Support** |  | 3d | 2016-09-02 | 2016-09-07 |  | 2016-09-02 | 2016-09-07 | 3d | 0d |  |  |  | 24h |  |  |
| 22 | 3.6.1 | Plan team staffing to support sales goals |  | 3d | 2016-09-02 | 2016-09-07 | 20 | 2016-09-02 | 2016-09-07 | 3d | 0d |  |  | Edwin Witcher | 24h |  |  |
| 23 | 4 | Detailed Planning Complete | milestone | 0d | 2016-09-07 | 2016-09-07 | 22 | 2016-09-07 | 2016-09-07 | 0d | 0d |  |  |  |  |  |  |
| 24 | 5 | **Phase 3 - Execution** |  | 55d | 2016-09-08 | 2016-11-24 |  | 2016-09-08 | 2016-11-24 | 55d | 0d |  |  |  | 968h |  |  |
| 25 | 5.1 | **Marketing** |  | 22d | 2016-09-08 | 2016-10-07 |  | 2016-09-08 | 2016-10-07 | 22d | 0d |  |  |  | 296h |  |  |
| 26 | 5.1.1 | Evaluate market and refine messaging |  | 1d | 2016-09-08 | 2016-09-08 | 23 | 2016-09-08 | 2016-09-08 | 1d | 0d |  |  | Humberto Maple | 8h |  |  |
| 27 | 5.1.2 | Create press releases |  | 2d | 2016-09-09 | 2016-09-12 | 26 | 2016-09-09 | 2016-09-12 | 2d | 26d | 0d |  | Final Quality Paper [2 cartons]; Kristine Rowe | 16h |  |  |
| 28 | 5.1.3 | Create product specification literature |  | 5d | 2016-09-13 | 2016-09-19 | 27 | 2016-09-13 | 2016-09-19 | 5d | 26d | 0d |  | Edwin Witcher; Juan Madera | 80h |  |  |
| 29 | 5.1.4 | Create sales presentations |  | 5d | 2016-09-20 | 2016-09-26 | 28 | 2016-09-20 | 2016-09-26 | 5d | 26d | 0d |  | Mable McDonald; Shannon Clemons | 80h |  |  |
| 30 | 5.1.5 | Create sales, field, and product support training |  | 5d | 2016-09-27 | 2016-10-03 | 29 | 2016-09-27 | 2016-10-03 | 5d | 26d | 0d |  | Edwin Witcher; Shannon Clemons | 80h |  |  |
| 31 | 5.1.6 | Update product forecasts based on market feedback and analysis |  | 2d | 2016-10-04 | 2016-10-05 | 30 | 2016-10-04 | 2016-10-05 | 2d | 26d | 0d |  | Edwin Witcher | 16h |  |  |
| 32 | 5.1.7 | Update launch plan based on forecast |  | 2d | 2016-10-06 | 2016-10-07 | 31 | 2016-10-06 | 2016-10-07 | 2d | 66d |  |  | Edwin Witcher | 16h |  |  |

Notes:
- 12: This is a good presentation to start with, and to modify.
- 15: Engineering has its own set of plans that it will follow.
- 26: Market receptivity is evaluated by key customer feedback, focus groups, test markets, or beta tests.

| ID | WBS | Task | Type | Duration | Start | Finish | Predecessors | Baseline start | Baseline finish | Baseline duration | Total slack | Free slack | Resources | Work |
| --- | --- | --- | --- | --- | --- | --- | --- | --- | --- | --- | --- | --- | --- | --- |
| 33 | 5.2 | **Engineering** |  | 30d | 2016-09-08 | 2016-10-19 |  | 2016-09-08 | 2016-10-19 | 30d | 0d |  |  | 240h |
| 34 | 5.2.1 | Complete and test product |  | 30d | 2016-09-08 | 2016-10-19 | 26SS | 2016-09-08 | 2016-10-19 | 30d | 0d |  | Winston Blanks | 240h |
| 35 | 5.3 | **Manufacturing** |  | 25d | 2016-10-20 | 2016-11-24 |  | 2016-10-20 | 2016-11-24 | 25d | 0d |  |  | 400h |
| 36 | 5.3.1 | Create prototype products |  | 20d | 2016-10-20 | 2016-11-17 | 34 | 2016-10-20 | 2016-11-17 | 20d | 0d |  | Edwin Witcher; Winston Blanks | 320h |
| 37 | 5.3.2 | Prepare pipeline |  | 5d | 2016-11-17 | 2016-11-24 | 36 | 2016-11-17 | 2016-11-24 | 5d | 0d |  | Edwin Witcher; Winston Blanks | 80h |
| 38 | 5.4 | **Sales** |  | 2d | 2016-10-06 | 2016-10-07 |  | 2016-10-06 | 2016-10-07 | 2d | 26d |  |  | 16h |
| 39 | 5.4.1 | Establish sales channels |  | 2d | 2016-10-06 | 2016-10-07 | 31 | 2016-10-06 | 2016-10-07 | 2d | 26d | 0d | Shannon Clemons | 16h |
| 40 | 5.5 | **Product Support** |  | 2d | 2016-10-10 | 2016-10-11 |  | 2016-10-10 | 2016-10-11 | 2d | 26d |  |  | 16h |
| 41 | 5.5.1 | Establish product support mechanisms |  | 2d | 2016-10-10 | 2016-10-11 | 39 | 2016-10-10 | 2016-10-11 | 2d | 26d | 0d | Edwin Witcher | 16h |
| 42 | 6 | Execution Phase Complete | milestone | 0d | 2016-10-11 | 2016-10-11 | 41 | 2016-10-11 | 2016-10-11 | 0d | 26d | 0d |  |  |
| 43 | 7 | **Phase 4 - Release To Manufacture** |  | 64d | 2016-10-12 | 2017-01-10 |  | 2016-10-12 | 2017-01-10 | 64d | 0d |  |  | 784h |
| 44 | 7.1 | **Manufacturing** |  | 61d | 2016-10-12 | 2017-01-05 |  | 2016-10-12 | 2017-01-05 | 61d | 0d |  |  | 520h |
| 45 | 7.1.1 | Certify product |  | 5d | 2016-10-12 | 2016-10-18 | 42 | 2016-10-12 | 2016-10-18 | 5d | 26d |  | Jeannette Bowman | 40h |
| 46 | 7.1.2 | Manufacture the volume of product planned to meet sales objectives. |  | 30d | 2016-11-24 | 2017-01-05 | 45, 37 | 2016-11-24 | 2017-01-05 | 30d | 0d |  | Winston Blanks; Edwin Witcher | 480h |
| 47 | 7.2 | **Sales** |  | 10d | 2016-11-17 | 2016-12-01 |  | 2016-11-17 | 2016-12-01 | 10d | 0d |  |  | 160h |
| 48 | 7.2.1 | Hire and train sales staff |  | 10d | 2016-11-17 | 2016-12-01 | 36SS+20d | 2016-11-17 | 2016-12-01 | 10d | 0d |  | Mable McDonald; Shannon Clemons | 160h |
| 49 | 7.3 | **Product Support** |  | 10d | 2016-12-22 | 2017-01-05 |  | 2016-12-22 | 2017-01-05 | 10d | 0d |  |  | 80h |
| 50 | 7.3.1 | Hire and train product support personnel |  | 10d | 2016-12-22 | 2017-01-05 | 48FS+15d | 2016-12-22 | 2017-01-05 | 10d | 0d |  | Cameron Kellum | 80h |
| 51 | 7.4 | **Final Quality Review** |  | 3d | 2017-01-05 | 2017-01-10 |  | 2017-01-05 | 2017-01-10 | 3d | 0d |  |  | 24h |
| 52 | 7.4.1 | Conduct final quality review |  | 3d | 2017-01-05 | 2017-01-10 | 50, 46 | 2017-01-05 | 2017-01-10 | 3d | 0d |  | Jeannette Bowman | 24h |
| 53 | 7.4.2 | Product Release Information Complete | milestone | 0d | 2017-01-10 | 2017-01-10 | 52 | 2017-01-10 | 2017-01-10 | 0d | 0d |  |  |  |
| 54 | 7.4.3 | Needed materials are on order or in stock. | milestone | 0d | 2017-01-10 | 2017-01-10 | 53 | 2017-01-10 | 2017-01-10 | 0d | 0d |  |  |  |
| 55 | 7.4.4 | Literature Complete | milestone | 0d | 2017-01-10 | 2017-01-10 | 54 | 2017-01-10 | 2017-01-10 | 0d | 0d |  |  |  |
| 56 | 7.4.5 | Training Complete | milestone | 0d | 2017-01-05 | 2017-01-05 | 48, 50 | 2017-01-05 | 2017-01-05 | 0d | 3d |  |  |  |
| 57 | 7.5 | Launch Product | milestone | 0d | 2017-01-10 | 2017-01-10 | 55, 56 | 2017-01-10 | 2017-01-10 | 0d | 0d |  |  |  |

Notes:
- 34: Product performance is evaluated through testing and qualification.
- 36: Production processes are developed initially using pilot production lines and later using actual production lines.
- 37: The distribution pipeline is filled with the appropriate level of product.
- 45: The product and the production process have been qualified or validated and all regulatory approvals and/or certifications have been obtained.
- 55: Advertising, product brochures, marketing materials, press releases, and Web pages have been prepared and are ready to distribute at the appropriate time.
- 56: Sales, service, and support personnel have been trained or a phased training program is underway.
- 57: The new product is launched when service, sales, and distribution channels are ready.
