# My_Trey_Slide_Presenter_Custom_Options

Schedule from MS Project, 2016-08-01 to 2017-01-20, status date 2016-09-02, costs in $, A marks actual dates.

## Calendars

- Trey Research: Mon-Fri 08:00-12:00, 13:00-17:00; Sat-Sun off. Exceptions (off unless hours are given): 2016-05-30 to 2025-05-26 (Memorial Day, recurring), 2016-09-05 to 2025-09-01 (Labor Day, recurring), 2016-11-08 08:00-12:00 (Election Day).

## Resources

| Resource | Unit | Rate |
| --- | --- | --- |
| Mable McDonald |  | 20 |
| Jeannette Bowman |  | 25 |
| Brittany Stuart |  | 20 |
| Margarita Steele |  | 20 |
| Juan Madera |  | 20 |
| Draft Quality Paper | cartons | 5 |
| Final Quality Paper | cartons | 10 |
| Travel Expenses |  |  |
| Winston Blanks |  | 20 |
| Humberto Maple |  | 25 |
| Kristine Rowe |  | 20 |
| Barbara Navarro |  | 25 |
| Edwin Witcher |  | 20 |
| Shannon Clemons |  | 25 |
| Cameron Kellum |  | 20 |

## Schedule

| ID | WBS | Task | Type | Duration | Start | Finish | Predecessors | Complete | Remaining | Baseline start | Baseline finish | Baseline duration | Total slack | Free slack | Constraint | Resources | Work | Actual work | Cost | Baseline cost | Actual cost |
| --- | --- | --- | --- | --- | --- | --- | --- | --- | --- | --- | --- | --- | --- | --- | --- | --- | --- | --- | --- | --- | --- |
| 1 | 1 | **Phase 1 - High-Level Planning** |  | 19d | 2016-08-01 A | 2016-08-25 A |  | 100% |  | 2016-08-01 | 2016-08-18 | 14d |  |  |  |  | 120h | 120h | 2,620 | 1,820 | 2,520 |
| 2 | 1.1 | Determine sales objectives |  | 1d | 2016-08-01 A | 2016-08-01 A |  | 100% |  | 2016-08-01 | 2016-08-01 | 1d |  |  |  | Mable McDonald; Shannon Clemons | 16h | 16h | 360 | 360 | 360 |
| 3 | 1.2 | Define launch goals (launch timing and publicity objectives) |  | 2d | 2016-08-02 A | 2016-08-03 A | 2 | 100% |  | 2016-08-02 | 2016-08-03 | 2d |  |  |  | Jeannette Bowman | 16h | 16h | 400 | 400 | 400 |
| 4 | 1.3 | **Establish Launch Budget** |  | 16d | 2016-08-04 A | 2016-08-25 A |  | 100% |  | 2016-08-04 | 2016-08-18 | 11d |  |  |  |  | 88h | 88h | 1,860 | 1,060 | 1,760 |
| 5 | 1.3.1 | Identify budget requirements |  | 1d | 2016-08-04 A | 2016-08-04 A | 3 | 100% |  | 2016-08-04 | 2016-08-04 | 1d |  |  |  | Brittany Stuart; Travel Expenses [0.1%] | 8h | 8h | 260 | 260 | 160 |
| 6 | 1.3.2 | Obtain launch budget approval |  | 10d | 2016-08-12 A | 2016-08-25 A | 5FS+5d | 100% |  | 2016-08-12 | 2016-08-18 | 5d |  |  |  | Cameron Kellum | 80h | 80h | 1,600 | 800 | 1,600 |
| 7 | 2 | High-Level Planning Complete | milestone | 0d | 2016-08-25 A | 2016-08-25 A | 6 | 100% |  | 2016-08-18 | 2016-08-18 | 0d |  |  |  |  |  |  |  |  |  |
| 8 | 3 | **Phase 2 - Detailed Planning** |  | 16d | 2016-08-26 A | 2016-09-19 |  | 52% | 7.65d | 2016-08-19 | 2016-09-08 | 14d | 0d |  |  |  | 252h | 128h | 5,520 | 4,320 | 2,840 |
| 9 | 3.1 | Kickoff product launch |  | 2d | 2016-08-26 A | 2016-08-29 A | 7 | 100% |  | 2016-08-19 | 2016-08-19 | 1d |  |  |  | Edwin Witcher | 16h | 16h | 320 | 160 | 320 |
| 10 | 3.2 | **Marketing** |  | 4d | 2016-08-30 A | 2016-09-02 |  | 91% | 0.36d | 2016-08-22 | 2016-08-24 | 3d | 0d |  |  |  | 124h | 112h | 2,800 | 1,760 | 2,520 |
| 11 | 3.2.1 | Define press release requirements |  | 2d | 2016-08-30 A | 2016-08-31 A | 9 | 100% |  | 2016-08-22 | 2016-08-23 | 2d |  |  |  | Humberto Maple [50%] | 8h | 8h | 200 | 200 | 200 |
| 12 | 3.2.2 | Define sales presentations |  | 4d | 2016-08-30 A | 2016-09-02 | 9 | 75% | 1d | 2016-08-23 | 2016-08-24 | 2d | 0d |  | start no earlier than 2016-08-23 | Juan Madera; Jeannette Bowman | 60h | 48h | 1,360 | 720 | 1,080 |
| 13 | 3.2.3 | Define product specification literature |  | 2d | 2016-08-30 A | 2016-08-31 A | 9 | 100% |  | 2016-08-22 | 2016-08-23 | 2d |  |  |  | Kristine Rowe; Mable McDonald | 32h | 32h | 640 | 640 | 640 |
| 14 | 3.2.4 | Define internal communication needs |  | 3d | 2016-08-30 A | 2016-09-01 A | 9 | 100% |  | 2016-08-22 | 2016-08-22 | 1d |  |  |  | Shannon Clemons | 24h | 24h | 600 | 200 | 600 |
| 15 | 3.3 | **Engineering** |  | 3d | 2016-09-06 | 2016-09-08 |  |  |  | 2016-08-25 | 2016-08-29 | 3d | 0d |  |  |  | 24h |  | 480 | 480 |  |
| 16 | 3.3.1 | Align product release timing with marketing plan |  | 3d | 2016-09-06 | 2016-09-08 | 14, 11, 12, 13 |  |  | 2016-08-25 | 2016-08-29 | 3d | 0d |  |  | Winston Blanks | 24h |  | 480 | 480 |  |
| 17 | 3.4 | **Manufacturing** |  | 2d | 2016-09-09 | 2016-09-12 |  |  |  | 2016-08-30 | 2016-08-31 | 2d | 0d |  |  |  | 48h |  | 1,120 | 1,120 |  |
| 18 | 3.4.1 | Prepare for volume manufacturing according to sales goals |  | 2d | 2016-09-09 | 2016-09-12 | 16 |  |  | 2016-08-30 | 2016-08-31 | 2d | 0d |  |  | Winston Blanks; Shannon Clemons; Jeannette Bowman | 48h |  | 1,120 | 1,120 |  |
| 19 | 3.5 | **Sales** |  | 2d | 2016-09-13 | 2016-09-14 |  |  |  | 2016-09-01 | 2016-09-02 | 2d | 0d |  |  |  | 16h |  | 320 | 320 |  |
| 20 | 3.5.1 | Plan sales force staffing and training to support sales goals |  | 2d | 2016-09-13 | 2016-09-14 | 18 |  |  | 2016-09-01 | 2016-09-02 | 2d | 0d |  |  | Mable McDonald | 16h |  | 320 | 320 |  |
| 21 | 3.6 | **Product Support** |  | 3d | 2016-09-15 | 2016-09-19 |  |  |  | 2016-09-06 | 2016-09-08 | 3d | 0d |  |  |  | 24h |  | 480 | 480 |  |
| 22 | 3.6.1 | Plan team staffing to support sales goals |  | 3d | 2016-09-15 | 2016-09-19 | 20 |  |  | 2016-09-06 | 2016-09-08 | 3d | 0d |  |  | Edwin Witcher | 24h |  | 480 | 480 |  |
| 23 | 4 | Detailed Planning Complete | milestone | 0d | 2016-09-19 | 2016-09-19 | 22 |  |  | 2016-09-08 | 2016-09-08 | 0d | 0d |  |  |  |  |  |  |  |  |
| 24 | 5 | **Phase 3 - Execution** |  | 55d | 2016-09-20 | 2016-12-06 |  |  |  | 2016-09-09 | 2016-11-25 | 55d | 0d |  |  |  | 968h |  | 19,900 | 19,900 |  |
| 25 | 5.1 | **Marketing** |  | 22d | 2016-09-20 | 2016-10-19 |  |  |  | 2016-09-09 | 2016-10-10 | 22d | 0d |  |  |  | 296h |  | 6,380 | 6,380 |  |
| 26 | 5.1.1 | Evaluate market and refine messaging |  | 1d | 2016-09-20 | 2016-09-20 | 23 |  |  | 2016-09-09 | 2016-09-09 | 1d | 0d |  |  | Humberto Maple | 8h |  | 200 | 200 |  |
| 27 | 5.1.2 | Create press releases |  | 2d | 2016-09-21 | 2016-09-22 | 26 |  |  | 2016-09-12 | 2016-09-13 | 2d | 26d | 0d |  | Final Quality Paper [2 cartons]; Kristine Rowe | 16h |  | 340 | 340 |  |
| 28 | 5.1.3 | Create product specification literature |  | 5d | 2016-09-23 | 2016-09-29 | 27 |  |  | 2016-09-14 | 2016-09-20 | 5d | 26d | 0d |  | Edwin Witcher; Juan Madera | 80h |  | 1,600 | 1,600 |  |
| 29 | 5.1.4 | Create sales presentations |  | 5d | 2016-09-30 | 2016-10-06 | 28 |  |  | 2016-09-21 | 2016-09-27 | 5d | 26d | 0d |  | Mable McDonald; Shannon Clemons | 80h |  | 1,800 | 1,800 |  |
| 30 | 5.1.5 | Create sales, field, and product support training |  | 5d | 2016-10-07 | 2016-10-13 | 29 |  |  | 2016-09-28 | 2016-10-04 | 5d | 26d | 0d |  | Edwin Witcher; Shannon Clemons | 80h |  | 1,800 | 1,800 |  |
| 31 | 5.1.6 | Update product forecasts based on market feedback and analysis |  | 2d | 2016-10-14 | 2016-10-17 | 30 |  |  | 2016-10-05 | 2016-10-06 | 2d | 26d | 0d |  | Edwin Witcher | 16h |  | 320 | 320 |  |
| 32 | 5.1.7 | Update launch plan based on forecast |  | 2d | 2016-10-18 | 2016-10-19 | 31 |  |  | 2016-10-07 | 2016-10-10 | 2d | 66d |  |  | Edwin Witcher | 16h |  | 320 | 320 |  |

Notes:
- 12: This is a good presentation to start with, and to modify.
- 15: Engineering has its own set of plans that it will follow.
- 26: Market receptivity is evaluated by key customer feedback, focus groups, test markets, or beta tests.

| ID | WBS | Task | Type | Duration | Start | Finish | Predecessors | Baseline start | Baseline finish | Baseline duration | Total slack | Free slack | Resources | Work | Cost | Baseline cost |
| --- | --- | --- | --- | --- | --- | --- | --- | --- | --- | --- | --- | --- | --- | --- | --- | --- |
| 33 | 5.2 | **Engineering** |  | 30d | 2016-09-20 | 2016-10-31 |  | 2016-09-09 | 2016-10-20 | 30d | 0d |  |  | 240h | 4,800 | 4,800 |
| 34 | 5.2.1 | Complete and test product |  | 30d | 2016-09-20 | 2016-10-31 | 26SS | 2016-09-09 | 2016-10-20 | 30d | 0d |  | Winston Blanks | 240h | 4,800 | 4,800 |
| 35 | 5.3 | **Manufacturing** |  | 25d | 2016-11-01 | 2016-12-06 |  | 2016-10-21 | 2016-11-25 | 25d | 0d |  |  | 400h | 8,000 | 8,000 |
| 36 | 5.3.1 | Create prototype products |  | 20d | 2016-11-01 | 2016-11-29 | 34 | 2016-10-21 | 2016-11-18 | 20d | 0d |  | Edwin Witcher; Winston Blanks | 320h | 6,400 | 6,400 |
| 37 | 5.3.2 | Prepare pipeline |  | 5d | 2016-11-29 | 2016-12-06 | 36 | 2016-11-18 | 2016-11-25 | 5d | 0d |  | Edwin Witcher; Winston Blanks | 80h | 1,600 | 1,600 |
| 38 | 5.4 | **Sales** |  | 2d | 2016-10-18 | 2016-10-19 |  | 2016-10-07 | 2016-10-10 | 2d | 26d |  |  | 16h | 400 | 400 |
| 39 | 5.4.1 | Establish sales channels |  | 2d | 2016-10-18 | 2016-10-19 | 31 | 2016-10-07 | 2016-10-10 | 2d | 26d | 0d | Shannon Clemons | 16h | 400 | 400 |
| 40 | 5.5 | **Product Support** |  | 2d | 2016-10-20 | 2016-10-21 |  | 2016-10-11 | 2016-10-12 | 2d | 26d |  |  | 16h | 320 | 320 |
| 41 | 5.5.1 | Establish product support mechanisms |  | 2d | 2016-10-20 | 2016-10-21 | 39 | 2016-10-11 | 2016-10-12 | 2d | 26d | 0d | Edwin Witcher | 16h | 320 | 320 |
| 42 | 6 | Execution Phase Complete | milestone | 0d | 2016-10-21 | 2016-10-21 | 41 | 2016-10-12 | 2016-10-12 | 0d | 26d | 0d |  |  |  |  |
| 43 | 7 | **Phase 4 - Release To Manufacture** |  | 64d | 2016-10-24 | 2017-01-20 |  | 2016-10-13 | 2017-01-11 | 64d | 0d |  |  | 784h | 16,400 | 16,400 |
| 44 | 7.1 | **Manufacturing** |  | 61d | 2016-10-24 | 2017-01-17 |  | 2016-10-13 | 2017-01-06 | 61d | 0d |  |  | 520h | 10,600 | 10,600 |
| 45 | 7.1.1 | Certify product |  | 5d | 2016-10-24 | 2016-10-28 | 42 | 2016-10-13 | 2016-10-19 | 5d | 26d |  | Jeannette Bowman | 40h | 1,000 | 1,000 |
| 46 | 7.1.2 | Manufacture the volume of product planned to meet sales objectives. |  | 30d | 2016-12-06 | 2017-01-17 | 45, 37 | 2016-11-25 | 2017-01-06 | 30d | 0d |  | Winston Blanks; Edwin Witcher | 480h | 9,600 | 9,600 |
| 47 | 7.2 | **Sales** |  | 10d | 2016-11-29 | 2016-12-13 |  | 2016-11-18 | 2016-12-02 | 10d | 0d |  |  | 160h | 3,600 | 3,600 |
| 48 | 7.2.1 | Hire and train sales staff |  | 10d | 2016-11-29 | 2016-12-13 | 36SS+20d | 2016-11-18 | 2016-12-02 | 10d | 0d |  | Mable McDonald; Shannon Clemons | 160h | 3,600 | 3,600 |
| 49 | 7.3 | **Product Support** |  | 10d | 2017-01-03 | 2017-01-17 |  | 2016-12-23 | 2017-01-06 | 10d | 0d |  |  | 80h | 1,600 | 1,600 |
| 50 | 7.3.1 | Hire and train product support personnel |  | 10d | 2017-01-03 | 2017-01-17 | 48FS+15d | 2016-12-23 | 2017-01-06 | 10d | 0d |  | Cameron Kellum | 80h | 1,600 | 1,600 |
| 51 | 7.4 | **Final Quality Review** |  | 3d | 2017-01-17 | 2017-01-20 |  | 2017-01-06 | 2017-01-11 | 3d | 0d |  |  | 24h | 600 | 600 |
| 52 | 7.4.1 | Conduct final quality review |  | 3d | 2017-01-17 | 2017-01-20 | 50, 46 | 2017-01-06 | 2017-01-11 | 3d | 0d |  | Jeannette Bowman | 24h | 600 | 600 |
| 53 | 7.4.2 | Product Release Information Complete | milestone | 0d | 2017-01-20 | 2017-01-20 | 52 | 2017-01-11 | 2017-01-11 | 0d | 0d |  |  |  |  |  |
| 54 | 7.4.3 | Needed materials are on order or in stock. | milestone | 0d | 2017-01-20 | 2017-01-20 | 53 | 2017-01-11 | 2017-01-11 | 0d | 0d |  |  |  |  |  |
| 55 | 7.4.4 | Literature Complete | milestone | 0d | 2017-01-20 | 2017-01-20 | 54 | 2017-01-11 | 2017-01-11 | 0d | 0d |  |  |  |  |  |
| 56 | 7.4.5 | Training Complete | milestone | 0d | 2017-01-17 | 2017-01-17 | 48, 50 | 2017-01-06 | 2017-01-06 | 0d | 3d |  |  |  |  |  |
| 57 | 7.5 | Launch Product | milestone | 0d | 2017-01-20 | 2017-01-20 | 55, 56 | 2017-01-11 | 2017-01-11 | 0d | 0d |  |  |  |  |  |

Notes:
- 34: Product performance is evaluated through testing and qualification.
- 36: Production processes are developed initially using pilot production lines and later using actual production lines.
- 37: The distribution pipeline is filled with the appropriate level of product.
- 45: The product and the production process have been qualified or validated and all regulatory approvals and/or certifications have been obtained.
- 55: Advertising, product brochures, marketing materials, press releases, and Web pages have been prepared and are ready to distribute at the appropriate time.
- 56: Sales, service, and support personnel have been trained or a phased training program is underway.
- 57: The new product is launched when service, sales, and distribution channels are ready.
